# timeLineProgettoContatore

Schedule from MS Project, 2021-02-08 to 2021-02-26.

## Calendars

- Standard: Mon-Fri 09:00-13:00, 14:00-18:00; Sat-Sun off.

## Resources

| Resource |
| --- |
| Moscatello Enrico |
| Luppino Vincenzo |
| Angeretti Marco |
| Pignata Marcello |

## Schedule

| ID | WBS | Task | Type | Duration | Start | Finish | Predecessors | Resources | Work |
| --- | --- | --- | --- | --- | --- | --- | --- | --- | --- |
| 1 | 1 | **Progetto lettura contatore** |  | 7d? | 2021-02-08 | 2021-02-16 |  |  | 624h |
| 2 | 1.1 | **1 Materiali** |  | 0d | 2021-02-08 | 2021-02-08 |  |  | 80h |
| 3 | 1.1.1 | 1.1 Ricerca materiali | manual | 3d | 2021-02-08 | 2021-02-10 |  | Moscatello Enrico | 24h |
| 4 | 1.1.2 | 1.2 Acquisto materiali | manual | 7d | 2021-02-11 | 2021-02-19 | 3 | Moscatello Enrico | 56h |
| 5 | 1.2 | **2 Prototipo 1** |  | 7d? | 2021-02-08 | 2021-02-16 |  |  | 416h |
| 6 | 1.2.1 | **2.1 Realizzazione software** |  | 0d? | 2021-02-08 | 2021-02-08 |  |  | 288h |
| 7 | 1.2.1.1 | **2.1.1 Riconoscimento numeri/targhe** |  | 0d? | 2021-02-08 | 2021-02-08 |  |  | 72h |
| 8 | 1.2.1.1.1 | 2.1.1.1 Ricerca | manual | 2d | 2021-02-08 | 2021-02-09 |  | Pignata Marcello | 16h |
| 9 | 1.2.1.1.2 | 2.1.1.2 Sviluppo software | manual | 5d | 2021-02-09 | 2021-02-15 | 8 | Pignata Marcello | 40h |
| 10 | 1.2.1.1.3 | 2.1.1.3 Test sul raspberry | manual | 2d | 2021-02-23 | 2021-02-24 | 9, 28 | Pignata Marcello | 16h |
| 11 | 1.2.1.2 | **2.1.2 Riconoscimento lancette micro misurazioni** |  | 0d? | 2021-02-08 | 2021-02-08 |  |  | 72h |
| 12 | 1.2.1.2.1 | 2.1.2.1 Ricerca | manual | 2d | 2021-02-08 | 2021-02-09 |  | Moscatello Enrico | 16h |
| 13 | 1.2.1.2.2 | 2.1.2.2 Sviluppo software | manual | 5d | 2021-02-09 | 2021-02-15 | 12 | Moscatello Enrico | 40h |
| 14 | 1.2.1.2.3 | 2.1.2.3 Test sul raspberry | manual | 2d | 2021-02-23 | 2021-02-24 | 13, 28 | Moscatello Enrico | 16h |
| 15 | 1.2.1.3 | **2.1.3 Gestione stand-by del dispositivo** |  | 0d? | 2021-02-08 | 2021-02-08 |  |  | 72h |
| 16 | 1.2.1.3.1 | 2.1.3.1 Ricerca | manual | 2d | 2021-02-08 | 2021-02-09 |  | Angeretti Marco | 16h |
| 17 | 1.2.1.3.2 | 2.1.3.2 Sviluppo software | manual | 5d | 2021-02-09 | 2021-02-15 | 16 | Angeretti Marco | 40h |
| 18 | 1.2.1.3.3 | 2.1.3.3 Test sul raspberry | manual | 2d | 2021-02-23 | 2021-02-24 | 17, 28 | Angeretti Marco | 16h |
| 19 | 1.2.1.4 | **2.1.4 Invio dati al cloud server** |  | 0d? | 2021-02-08 | 2021-02-08 |  |  | 72h |
| 20 | 1.2.1.4.1 | 2.1.4.1 Ricerca | manual | 2d | 2021-02-08 | 2021-02-09 |  | Luppino Vincenzo | 16h |
| 21 | 1.2.1.4.2 | 2.1.4.2 Sviluppo software | manual | 5d | 2021-02-09 | 2021-02-15 | 20 | Luppino Vincenzo | 40h |
| 22 | 1.2.1.4.3 | 2.1.4.3 Test sul raspberry | manual | 2d | 2021-02-23 | 2021-02-24 | 21, 28 | Luppino Vincenzo | 16h |
| 23 | 1.2.2 | **2.2 Realizzazione hardware** |  | 1d | 2021-02-08 | 2021-02-08 |  |  | 104h |
| 24 | 1.2.2.1 | **2.2.1 Progettazione 3d** |  | 1d | 2021-02-08 | 2021-02-08 |  |  | 88h |
| 25 | 1.2.2.1.1 | 2.2.1.1 Disegno dell'involucro in 3d | manual | 4d | 2021-02-08 | 2021-02-11 |  | Luppino Vincenzo | 32h |
| 26 | 1.2.2.1.2 | 2.2.1.2 Stampa 3d | manual | 7d | 2021-02-09 | 2021-02-17 | 25 | Luppino Vincenzo | 56h |

| ID | WBS | Task | Type | Duration | Start | Finish | Predecessors | Resources | Work |
| --- | --- | --- | --- | --- | --- | --- | --- | --- | --- |
| 27 | 1.2.2.2 | **2.2.2 Montaggio hardware** |  | 1d | 2021-02-08 | 2021-02-08 |  |  | 16h |
| 28 | 1.2.2.2.1 | 2.2.2.1 Montaggio provvisorio | manual | 1d | 2021-02-22 | 2021-02-22 | 4 | Angeretti Marco | 8h |
| 29 | 1.2.2.2.2 | 2.2.2.2 Montaggio completo con involucro 3d | manual | 1d | 2021-02-23 | 2021-02-23 | 26, 28 | Angeretti Marco | 8h |
| 30 | 1.2.3 | 2.3 Test completo prototipo 1 | manual | 3d | 2021-02-24 | 2021-02-26 | 10, 14, 18, 22, 29 | Moscatello Enrico | 24h |
| 31 | 1.3 | **3 Prototipo 2** |  | 1d? | 2021-02-08 | 2021-02-08 |  |  | 128h |
| 32 | 1.3.1 | **3.1 Realizzazione software** |  | 1d | 2021-02-08 | 2021-02-08 |  |  | 96h |
| 33 | 1.3.1.1 | **3.1.1 Riconoscimento numeri/targhe** |  | 1d | 2021-02-08 | 2021-02-08 |  |  | 24h |
| 34 | 1.3.1.1.1 | 3.1.1.1 Ricerca | manual | 1d | 2021-02-08 | 2021-02-08 |  | Pignata Marcello | 8h |
| 35 | 1.3.1.1.2 | 3.1.1.2 Sviluppo software | manual | 1d | 2021-02-08 | 2021-02-08 |  | Pignata Marcello | 8h |
| 36 | 1.3.1.1.3 | 3.1.1.3 Test sul raspberry | manual | 1d | 2021-02-08 | 2021-02-08 |  | Pignata Marcello | 8h |
| 37 | 1.3.1.2 | **3.1.2 Riconoscimento lancette micro misurazioni** |  | 1d | 2021-02-08 | 2021-02-08 |  |  | 24h |
| 38 | 1.3.1.2.1 | 3.1.2.1 Ricerca | manual | 1d | 2021-02-08 | 2021-02-08 |  | Moscatello Enrico | 8h |
| 39 | 1.3.1.2.2 | 3.1.2.2 Sviluppo software | manual | 1d | 2021-02-08 | 2021-02-08 |  | Moscatello Enrico | 8h |
| 40 | 1.3.1.2.3 | 3.1.2.3 Test sul raspberry | manual | 1d | 2021-02-08 | 2021-02-08 |  | Moscatello Enrico | 8h |
| 41 | 1.3.1.3 | **3.1.3 Gestione stand-by del dispositivo** |  | 1d | 2021-02-08 | 2021-02-08 |  |  | 24h |
| 42 | 1.3.1.3.1 | 3.1.3.1 Ricerca | manual | 1d | 2021-02-08 | 2021-02-08 |  | Angeretti Marco | 8h |
| 43 | 1.3.1.3.2 | 3.1.3.2 Sviluppo software | manual | 1d | 2021-02-08 | 2021-02-08 |  | Angeretti Marco | 8h |
| 44 | 1.3.1.3.3 | 3.1.3.3 Test sul raspberry | manual | 1d | 2021-02-08 | 2021-02-08 |  | Angeretti Marco | 8h |
| 45 | 1.3.1.4 | **3.1.4 Invio dati al cloud server** |  | 1d | 2021-02-08 | 2021-02-08 |  |  | 24h |
| 46 | 1.3.1.4.1 | 3.1.4.1 Ricerca | manual | 1d | 2021-02-08 | 2021-02-08 |  | Luppino Vincenzo | 8h |
| 47 | 1.3.1.4.2 | 3.1.4.2 Sviluppo software | manual | 1d | 2021-02-08 | 2021-02-08 |  | Luppino Vincenzo | 8h |
| 48 | 1.3.1.4.3 | 3.1.4.3 Test sul raspberry | manual | 1d | 2021-02-08 | 2021-02-08 |  | Luppino Vincenzo | 8h |
| 49 | 1.3.2 | **3.2 Realizzazione hardware** |  | 1d | 2021-02-08 | 2021-02-08 |  |  | 32h |
| 50 | 1.3.2.1 | **3.2.1 Progettazione 3d** |  | 1d | 2021-02-08 | 2021-02-08 |  |  | 16h |
| 51 | 1.3.2.1.1 | 3.2.1.1 Disegno dell'involucro in 3d | manual | 1d | 2021-02-08 | 2021-02-08 |  | Luppino Vincenzo | 8h |
| 52 | 1.3.2.1.2 | 3.2.1.2 Stampa 3d | manual | 1d | 2021-02-08 | 2021-02-08 |  | Luppino Vincenzo | 8h |

| ID | WBS | Task | Type | Duration | Start | Finish | Resources | Work |
| --- | --- | --- | --- | --- | --- | --- | --- | --- |
| 53 | 1.3.2.2 | **3.2.2 Montaggio hardware** |  | 1d | 2021-02-08 | 2021-02-08 |  | 16h |
| 54 | 1.3.2.2.1 | 3.2.2.1 Montaggio provvisorio | manual | 1d | 2021-02-08 | 2021-02-08 | Angeretti Marco | 8h |
| 55 | 1.3.2.2.2 | 3.2.2.2 Montaggio completo con involucro 3d | manual | 1d | 2021-02-08 | 2021-02-08 | Angeretti Marco | 8h |
| 56 | 1.3.3 | 3.3 Test completo prototipo 2 | manual | 1d? | 2021-02-08 | 2021-02-08 |  |  |
